# Centrale PAC 18 MW - Granges-Paccot (20.133)

How a schedule from MS Project XML changed from version to version. A marks actual dates.

## Version 1 (saved 2026-10-20)

Note of the change: Ajoute les exports MS Project et Excel

| ID | WBS | Task | Duration | Start | Finish | Predecessors | Constraint |
| --- | --- | --- | --- | --- | --- | --- | --- |
| 1 | 1 | **P0 - Gros œuvre, enveloppe et préparation** |  | 2026-10-26 | 2027-01-08 |  |  |
| 2 |  | Achèvement béton, étanchéité et enveloppe | 40d | 2026-10-26 | 2026-12-18 |  |  |
| 3 |  | Socles et massifs PAC 1 à 4 | 15d | 2026-10-26 | 2026-11-13 | 2SS |  |
| 4 |  | Socles armoires et coffrets (100 mm) | 10d | 2026-10-26 | 2026-11-06 | 2SS |  |
| 5 |  | Réservations et percements | 15d | 2026-10-26 | 2026-11-13 |  |  |
| 6 |  | Fenêtres | 15d | 2026-12-21 | 2027-01-08 | 2 |  |
| 7 | 2 | **P1 - Manutention et mise en place des équipements lourds** |  | 2026-10-26 | 2027-02-26 |  |  |
| 8 |  | Montage de l'accumulateur chaud | 60d | 2026-10-26 | 2027-01-15 |  |  |
| 9 |  | Manutention et pose PAC 1 (NH3) | 15d | 2026-11-16 | 2026-12-04 | 3 |  |
| 10 |  | Manutention et pose PAC 2 (NH3) | 15d | 2026-12-07 | 2026-12-25 | 3, 9 |  |
| 11 |  | Centrales froid CO2 n°1 et n°2 | 50d | 2026-12-21 | 2027-02-26 | 2 |  |
| 12 |  | Vases d'expansion (section 07) | 15d | 2026-12-21 | 2027-01-08 | 2 |  |
| 13 |  | Manutention et pose PAC 3 (NH3) | 15d | 2026-12-28 | 2027-01-15 | 10 |  |
| 14 |  | Manutention et pose PAC 4 (NH3) | 15d | 2027-01-18 | 2027-02-05 | 13 |  |
| 15 |  | Fermeture de l'accès de manutention | 5d | 2027-02-08 | 2027-02-12 | 14 |  |
| 16 | 3 | **P2 - Réseaux primaires** |  | 2026-10-26 | 2027-06-11 |  |  |
| 17 |  | Installations sanitaires | 15d | 2026-10-26 | 2026-11-13 |  |  |
| 18 |  | Serrurerie : garde-corps, échelles, caillebotis | 20d | 2026-12-21 | 2027-01-15 | 2 |  |
| 19 |  | Tuyauterie CO2 jusqu'aux echangeurs froid | 60d | 2027-02-08 | 2027-04-30 | 14, 11SS, 21SS |  |
| 20 |  | Echangeurs froid PAC 1 a 4 | 30d | 2027-02-08 | 2027-03-19 | 19SS |  |
| 21 |  | Tuyauterie hydraulique chaud (sections 00 à 06) | 80d | 2027-02-08 | 2027-05-28 | 14, 23SS |  |
| 22 |  | Pompage PAC | 20d | 2027-02-08 | 2027-03-05 | 21SS |  |
| 23 |  | Ventilation hygiénique - réseaux (section 42) | 60d | 2027-02-08 | 2027-04-30 | 14 |  |
| 24 |  | Ventilation commande, WC, vestiaire (section 41) | 15d | 2027-02-08 | 2027-02-26 | 23SS |  |
| 25 |  | Ventilation de sécurité CO2/NH3 - réseaux (section 43) | 50d | 2027-02-08 | 2027-04-16 | 23SS |  |
| 26 |  | Chemins de câbles et IEG | 80d | 2027-02-08 | 2027-05-28 | 14, 19SS |  |
| 27 |  | Froid process hydraulique et armoires de refroidissement des locaux | 60d | 2027-03-22 | 2027-06-11 | 20 |  |
| 28 | 4 | **P3 - Électricité de puissance** |  | 2026-10-26 | 2027-03-12 |  |  |
| 29 |  | Infrastructure MT et transformateurs | 60d | 2026-10-26 | 2027-01-15 |  |  |
| 30 |  | Tableaux TGBT | 60d | 2026-10-26 | 2027-01-15 |  |  |
| 31 |  | Armoires variateurs 1-2 et 3-4 | 40d | 2026-10-26 | 2026-12-18 | 30SS |  |
| 32 |  | Raccordement extérieur (MT réseau et conduites CAD) | 60d | 2026-10-26 | 2027-01-15 |  |  |
| 33 |  | STAP - génie civil, équipements et armoire de commande | 100d | 2026-10-26 | 2027-03-12 |  |  |
| 34 |  | Armoires et coffrets de commande (15 unités) | 20d | 2026-11-09 | 2026-12-04 | 4, 31SS |  |
| 35 | 5 | **P4 - Raccordements aux machines** |  | 2026-12-07 | 2027-07-23 |  |  |
| 36 |  | Raccordement des sondes de l'accumulateur | 5d | 2026-12-07 | 2026-12-11 | 47 |  |
| 37 |  | Raccordement hydraulique sur accumulateur | 10d | 2026-12-07 | 2026-12-18 | 47 |  |
| 38 |  | Automates et régulation MCR (API, RIO, HMI, Scada) | 50d | 2026-12-07 | 2027-02-12 | 34 |  |
| 39 |  | Raccordement hydraulique chaud sur PAC 1 à 4 | 20d | 2027-05-31 | 2027-06-25 | 14, 21 |  |
| 40 |  | Départ CAD et départ ZI (étape 1) | 20d | 2027-05-31 | 2027-06-25 | 21 |  |
| 41 |  | Câblage de puissance des PAC | 20d | 2027-05-31 | 2027-06-25 | 26, 31, 14 |  |
| 42 |  | Détection incendie et détection gaz NH3 / CO2 | 20d | 2027-05-31 | 2027-06-25 | 26 |  |
| 43 |  | Raccordement des sondes et actionneurs (hors accumulateur) | 40d | 2027-05-31 | 2027-07-23 | 21, 19, 38SS |  |
| 44 |  | Portes intérieures | 15d | 2027-05-31 | 2027-06-18 | 26 |  |
| 45 |  | Raccordement des chaufferies mobiles gaz (2 x 2.5 MW) | 15d | 2027-06-28 | 2027-07-16 | 40 |  |
| 46 | 6 | **P5 - Épreuves et essais** |  | 2026-11-30 | 2027-10-01 |  |  |
| 47 |  | Épreuve de pression de l'accumulateur | 5d | 2026-11-30 | 2026-12-04 | 8 | start no earlier than 2026-11-30 |
| 48 |  | Calorifugeage de l'accumulateur | 30d | 2026-12-14 | 2027-01-22 | 47, 36 |  |
| 49 |  | Épreuve d'étanchéité des circuits NH3 | 10d | 2027-02-08 | 2027-02-19 | 14 |  |
| 50 |  | Portes du chemin de manutention | 5d | 2027-02-08 | 2027-02-12 | 14 |  |
| 51 |  | Mise sous tension MT/BT et TGBT | 10d | 2027-05-03 | 2027-05-14 | 29, 30, 32, 23 |  |
| 52 |  | Rebouchages et calfeutrements coupe-feu | 15d | 2027-05-31 | 2027-06-18 | 26 |  |
| 53 |  | Rinçage et remplissage des réseaux hydrauliques | 10d | 2027-05-31 | 2027-06-11 | 21, 22, 12 |  |
| 54 |  | Épreuve d'étanchéité du circuit CO2 | 10d | 2027-06-14 | 2027-06-25 | 20, 27 |  |
| 55 |  | Épreuve de pression des réseaux hydrauliques | 5d | 2027-06-14 | 2027-06-18 | 53 |  |
| 56 |  | Tirage au vide du circuit CO2 | 5d | 2027-06-28 | 2027-07-02 | 54 |  |
| 57 |  | Mise en service et essais de la ventilation de secours et de la détection gaz | 15d | 2027-06-28 | 2027-07-16 | 25, 42, 51, 52 |  |
| 58 |  | Charge en NH3 des PAC 1 à 4 | 5d | 2027-07-19 | 2027-07-23 | 49, 57, 51 |  |
| 59 |  | Charge en CO2 | 5d | 2027-07-19 | 2027-07-23 | 56, 57, 51 |  |
| 60 |  | Calorifugeage des tuyauteries chaud et froid | 50d | 2027-07-26 | 2027-10-01 | 55, 43 |  |
| 61 | 7 | **P6 - Mise en service et réception** |  | 2027-05-17 | 2027-11-12 |  |  |
| 62 |  | Mise en service de la ventilation hygiénique et WC | 10d | 2027-05-17 | 2027-05-28 | 23, 24, 51 |  |
| 63 |  | Mise en charge nominale des variateurs | 10d | 2027-06-14 | 2027-06-25 | 51, 27 |  |
| 64 |  | Essais de boucles et de régulation | 30d | 2027-07-26 | 2027-09-03 | 43, 51 |  |
| 65 |  | Essais fonctionnels intégrés et mise en service des PAC | 40d | 2027-09-06 | 2027-10-29 | 64, 58, 59, 55, 62, 63 |  |
| 66 |  | Réception de l'installation | 10d | 2027-11-01 | 2027-11-12 | 65, 48, 60, 50, 57 |  |

## Version 2 (saved 2026-10-20)

Note of the change: Retire les chaufferies mobiles et le levage, désigne le pilote des essais

Last finish 2027-11-12 → 2027-11-05 (-7d).

Added:

| ID | Task | Duration | Start | Finish | Predecessors | Resources |
| --- | --- | --- | --- | --- | --- | --- |
| 5 | Mise en place du socle préfabriqué PAC 1 | 5d | 2026-11-30 | 2026-12-04 | 2SS | WETTSTEIN |
| 6 | Mise en place du socle préfabriqué PAC 2 | 5d | 2026-11-30 | 2026-12-04 | 2SS | WETTSTEIN |
| 17 | Raccordement hydraulique des vases d'expansion | 15d | 2026-11-30 | 2026-12-18 | 16SS | ENTRETEC |
| 18 | Pompes et collecteur de circulation des locaux PAC | 50d | 2026-11-30 | 2027-02-05 | 16SS | ENTRETEC |
| 19 | Ventilation du local de refroidissement des locaux élec. | 10d | 2026-11-30 | 2026-12-11 | 2 | HALG |
| 24 | Ventilation des galeries et locaux techniques N-1 | 25d | 2027-03-15 | 2027-04-16 | 2SS, 16, 21 | HALG |
| 25 | Distribution du froid dans les galeries techniques | 20d | 2027-03-22 | 2027-04-16 | 23 | ENTRETEC |
| 32 | Cellules et transformateurs MT/BT, rails d'énergie | 40d | 2027-02-01 | 2027-03-26 |  | GETECH-INFRA |
| 33 | Pose des tableaux TGBT | 40d | 2027-03-29 | 2027-05-21 | 32 | GETECH-TABLEAU |
| 34 | Armoires variateurs 1 et 2 | 30d | 2027-03-29 | 2027-05-07 | 33SS | EXERGO |
| 40 | Raccordement hydraulique chaud PAC 1 | 20d | 2027-03-22 | 2027-04-16 | 11, 16 | ENTRETEC |
| 41 | Échangeur froid et CO2 PAC 1 | 20d | 2027-03-22 | 2027-04-16 | 40SS, 15 | DESPRAZ |
| 44 | Armoires de refroidissement des locaux électriques | 10d | 2027-05-24 | 2027-06-04 | 25, 34, 33 | ENTRETEC |
| 46 | Câblage IEG des locaux électriques | 20d | 2027-06-07 | 2027-07-02 | 32, 33, 34, 44, 20SS | GETECH-IEG |
| 47 | Raccordement hydraulique chaud PAC 2 | 20d | 2027-07-05 | 2027-07-30 | 12, 16 | ENTRETEC |
| 48 | Échangeur froid et CO2 PAC 2 | 20d | 2027-07-05 | 2027-07-30 | 47SS, 15 | DESPRAZ |
| 65 | Charge en NH3 des PAC 1 et 2 | 5d | 2027-08-23 | 2027-08-27 | 60, 63, 57 | WETTSTEIN |

Removed: 3 Socles et massifs PAC 1 à 4; 9 Manutention et pose PAC 1 (NH3); 13 Manutention et pose PAC 3 (NH3); 14 Manutention et pose PAC 4 (NH3); 22 Pompage PAC; 27 Froid process hydraulique et armoires de refroidissement des locaux; 29 Infrastructure MT et transformateurs; 30 Tableaux TGBT; 31 Armoires variateurs 1-2 et 3-4; 39 Raccordement hydraulique chaud sur PAC 1 à 4; 58 Charge en NH3 des PAC 1 à 4

Changed:

| ID | Task | Start | Finish | Duration | Predecessors | Other |
| --- | --- | --- | --- | --- | --- | --- |
| 1 | **P0 - Gros œuvre, enveloppe et préparation** | 2026-10-26 → 2026-09-21 (-35d) | 2027-01-08 → 2026-12-18 (-21d) |  |  |  |
| 2 | Achèvement béton, étanchéité et enveloppe | 2026-10-26 → 2026-09-21 (-35d) | 2026-12-18 → 2026-11-13 (-35d) |  |  | constraint none → start no earlier than 2026-09-21 |
| 3 | Socles armoires et coffrets (100 mm) | 2026-10-26 → 2026-11-30 (+35d) | 2026-11-06 → 2026-12-11 (+35d) |  |  |  |
| 4 | Réservations et percements | 2026-10-26 → 2026-11-30 (+35d) | 2026-11-13 → 2026-12-18 (+35d) |  |  |  |
| 7 | Fenêtres | 2026-12-21 → 2026-11-30 (-21d) | 2027-01-08 → 2026-12-18 (-21d) |  |  |  |
| 8 | **P1 - Manutention et mise en place des équipements lourds** | 2026-10-26 → 2026-08-24 (-63d) | 2027-02-26 → 2027-07-09 (+133d) |  |  |  |
| 9 | Montage de l'accumulateur chaud | 2026-10-26 → 2026-08-24 (-63d) | 2027-01-15 → 2026-11-13 (-63d) |  |  | constraint none → start no earlier than 2026-08-24 |
| 10 | Centrale froid n°1 (hydraulique) | 2026-12-07 → 2026-11-30 (-7d) | 2026-12-25 → 2027-01-01 (+7d) | 15d → 25d | Socles et massifs PAC 1 à 4, Manutention et pose PAC 1 (NH3) → 2 | was named Manutention et pose PAC 2 (NH3); resources WETTSTEIN → ENTRETEC |
| 11 | Montage de la PAC 1 (NH3) dans le local | 2026-12-21 → 2026-12-07 (-14d) | 2027-02-26 → 2027-03-19 (+21d) | 50d → 75d | 2 → 5 | was named Centrales froid CO2 n°1 et n°2; resources DESPRAZ → WETTSTEIN |
| 12 | Montage de la PAC 2 (NH3) dans le local | 2026-12-21 → 2027-03-22 (+91d) | 2027-01-08 → 2027-07-02 (+175d) | 15d → 75d | 2 → 6, 11 | was named Vases d'expansion (section 07); resources ENTRETEC → WETTSTEIN |
| 13 | Fermeture de l'accès de manutention | 2027-02-08 → 2027-07-05 (+147d) | 2027-02-12 → 2027-07-09 (+147d) |  | Manutention et pose PAC 4 (NH3) → 12 |  |
| 14 | **P2 - Réseaux primaires** | 2026-10-26 → 2026-11-30 (+35d) | 2027-06-11 → 2027-06-25 (+14d) |  |  |  |
| 15 | Tuyauterie CO2 jusqu'aux echangeurs froid | 2027-02-08 → 2026-11-30 (-70d) | 2027-04-30 → 2027-02-19 (-70d) |  | Manutention et pose PAC 4 (NH3), 11SS, 16SS → 10SS, 16SS |  |
| 16 | Tuyauterie hydraulique chaud (sections 00 à 06) | 2027-02-08 → 2026-11-30 (-70d) | 2027-05-28 → 2027-03-12 (-77d) | 80d → 75d | Manutention et pose PAC 4 (NH3), 23SS → 2SS |  |
| 20 | Chemins de câbles et câblage IEG (hors locaux électriques) | 2027-02-08 → 2026-11-30 (-70d) |  | 30d → 80d |  | was named Echangeurs froid PAC 1 a 4; resources DESPRAZ → GETECH-IEG |
| 21 | Installations sanitaires | 2026-10-26 → 2026-11-30 (+35d) | 2026-11-13 → 2026-12-18 (+35d) |  |  |  |
| 22 | Serrurerie : garde-corps, échelles, caillebotis | 2026-12-21 → 2026-11-30 (-21d) | 2027-01-15 → 2026-12-25 (-21d) |  |  |  |
| 23 | Centrale de froid des locaux | 2027-02-08 → 2027-02-22 (+14d) | 2027-04-30 → 2027-03-19 (-42d) | 60d → 20d | Manutention et pose PAC 4 (NH3) → 15, 10, 19 | was named Ventilation hygiénique - réseaux (section 42); resources HALG → ENTRETEC |
| 26 | Ventilation hygiénique des autres locaux | 2027-02-08 → 2027-04-19 (+70d) | 2027-05-28 → 2027-05-21 (-7d) | 80d → 25d | Manutention et pose PAC 4 (NH3), 15SS → 24 | was named Chemins de câbles et IEG; resources GETECH → HALG |
| 27 | Ventilation commande, WC, vestiaire (section 41) | 2027-02-08 → 2027-04-19 (+70d) | 2027-02-26 → 2027-05-07 (+70d) |  | 23SS → 26SS |  |
| 28 | Ventilation de sécurité CO2/NH3 - réseaux (section 43) | 2027-02-08 → 2027-04-19 (+70d) | 2027-04-16 → 2027-06-25 (+70d) |  | 23SS → 26SS, 16, 21 |  |
| 29 | **P3 - Électricité de puissance** | 2026-10-26 → 2026-11-30 (+35d) | 2027-03-12 → 2027-05-21 (+70d) |  |  |  |
| 30 | Raccordement extérieur (MT réseau et conduites CAD) | 2026-10-26 → 2026-11-30 (+35d) | 2027-01-15 → 2027-02-19 (+35d) |  |  |  |
| 31 | STAP - génie civil, équipements et armoire de commande | 2026-10-26 → 2026-11-30 (+35d) | 2027-03-12 → 2027-04-16 (+35d) |  |  |  |
| 35 | Armoires et coffrets de commande (15 unités) | 2026-11-09 → 2027-03-29 (+140d) | 2026-12-04 → 2027-04-23 (+140d) |  | 3, Armoires variateurs 1-2 et 3-4SS → 3, 34SS | resources GETECH → GETECH-TABLEAU |
| 36 | **P4 - Raccordements aux machines** |  | 2027-07-23 → 2027-09-24 (+63d) |  |  |  |
| 39 | Départ CAD et départ ZI (étape 1) | 2027-05-31 → 2027-03-15 (-77d) | 2027-06-25 → 2027-04-09 (-77d) |  |  |  |
| 42 | Automates et régulation MCR (API, RIO, HMI, Scada) | 2026-12-07 → 2027-04-26 (+140d) | 2027-02-12 → 2027-07-02 (+140d) |  |  |  |
| 43 | Raccordement des sondes et actionneurs (hors accumulateur) | 2027-05-31 → 2027-04-26 (-35d) | 2027-07-23 → 2027-06-18 (-35d) |  |  |  |
| 45 | Armoires de refroidissement des locaux process | 2027-06-28 → 2027-06-07 (-21d) | 2027-07-16 → 2027-06-18 (-28d) | 15d → 10d | 39 → 44 | was named Raccordement des chaufferies mobiles gaz (2 x 2.5 MW) |
| 49 | Câblage de puissance des PAC | 2027-05-31 → 2027-07-05 (+35d) | 2027-06-25 → 2027-07-30 (+35d) |  | 26, Armoires variateurs 1-2 et 3-4, Manutention et pose PAC 4 (NH3) → 20, 34, 12, 46 | resources GETECH → GETECH-IEG |
| 50 | Détection incendie et détection gaz NH3 / CO2 | 2027-05-31 → 2027-07-05 (+35d) | 2027-06-25 → 2027-07-30 (+35d) |  | 26 → 20, 46 | resources GETECH → GETECH-IEG |
| 51 | Portes intérieures | 2027-05-31 → 2027-07-05 (+35d) | 2027-06-18 → 2027-09-24 (+98d) | 15d → 60d | 26 → 20, 46 |  |
| 52 | **P5 - Épreuves et essais** |  | 2027-10-01 → 2027-08-27 (-35d) |  |  |  |
| 54 | Calorifugeage de l'accumulateur |  |  |  |  | resources CALORIFUGEAGE → BILFINGER |
| 55 | Rinçage et remplissage des réseaux hydrauliques | 2027-05-31 → 2027-03-15 (-77d) | 2027-06-11 → 2027-03-26 (-77d) |  | 16, Pompage PAC, 12 → 16, 18, 17 |  |
| 56 | Épreuve de pression des réseaux hydrauliques | 2027-06-14 → 2027-03-29 (-77d) | 2027-06-18 → 2027-04-02 (-77d) |  |  |  |
| 57 | Mise sous tension MT/BT et TGBT | 2027-05-03 → 2027-05-24 (+21d) | 2027-05-14 → 2027-06-04 (+21d) |  | Infrastructure MT et transformateurs, Tableaux TGBT, 30, 23 → 32, 33, 30, 26 | resources GETECH → GETECH-INFRA |
| 58 | Calorifugeage des tuyauteries chaud et froid | 2027-07-26 → 2027-06-21 (-35d) | 2027-10-01 → 2027-08-27 (-35d) |  |  |  |
| 59 | Rebouchages et calfeutrements coupe-feu | 2027-05-31 → 2027-07-05 (+35d) | 2027-06-18 → 2027-07-23 (+35d) |  | 26 → 20, 46 |  |
| 60 | Épreuve d'étanchéité des circuits NH3 | 2027-02-08 → 2027-07-05 (+147d) | 2027-02-19 → 2027-07-16 (+147d) |  | Manutention et pose PAC 4 (NH3) → 12 |  |
| 61 | Portes du chemin de manutention | 2027-02-08 → 2027-07-05 (+147d) | 2027-02-12 → 2027-07-09 (+147d) |  | Manutention et pose PAC 4 (NH3) → 12 |  |
| 62 | Épreuve d'étanchéité du circuit CO2 | 2027-06-14 → 2027-08-02 (+49d) | 2027-06-25 → 2027-08-13 (+49d) |  | 20, Froid process hydraulique et armoires de refroidissement des locaux → 48, 45 |  |
| 63 | Mise en service et essais de la ventilation de secours et de la détection gaz | 2027-06-28 → 2027-08-02 (+35d) | 2027-07-16 → 2027-08-20 (+35d) |  |  |  |
| 64 | Tirage au vide du circuit CO2 | 2027-06-28 → 2027-08-16 (+49d) | 2027-07-02 → 2027-08-20 (+49d) |  |  |  |
| 66 | Charge en CO2 | 2027-07-19 → 2027-08-23 (+35d) | 2027-07-23 → 2027-08-27 (+35d) |  |  |  |
| 67 | **P6 - Mise en service et réception** | 2027-05-17 → 2027-06-07 (+21d) | 2027-11-12 → 2027-11-05 (-7d) |  |  |  |
| 68 | Mise en service de la ventilation hygiénique et WC | 2027-05-17 → 2027-06-07 (+21d) | 2027-05-28 → 2027-06-18 (+21d) |  | 23, 27, 57 → 26, 27, 57 |  |
| 69 | Mise en charge nominale des variateurs | 2027-06-14 → 2027-06-07 (-7d) | 2027-06-25 → 2027-06-18 (-7d) |  | 57, Froid process hydraulique et armoires de refroidissement des locaux → 57, 44 | resources GETECH → EXERGO |
| 70 | Essais de boucles et de régulation | 2027-07-26 → 2027-06-21 (-35d) | 2027-09-03 → 2027-07-30 (-35d) |  |  |  |
| 71 | Essais fonctionnels intégrés et mise en service des PAC | 2027-09-06 → 2027-08-30 (-7d) | 2027-10-29 → 2027-10-22 (-7d) |  | 70, Charge en NH3 des PAC 1 à 4, 66, 56, 68, 69 → 70, 65, 66, 56, 68, 69 |  |
| 72 | Réception de l'installation | 2027-11-01 → 2027-10-25 (-7d) | 2027-11-12 → 2027-11-05 (-7d) |  |  |  |
